# Cronograma

Schedule from MS Project, 2020-01-20 to 2020-03-03, A marks actual dates.

## Calendars

- Estándar: Mon-Fri 09:00-13:00, 15:00-19:00; Sat-Sun off.

## Resources

| Resource |
| --- |
| Cervantes Moreno Christian Andres |
| Flores Altamirano Edgar |
| López Rivera Aiko |
| López Sánchez Gustavo Andrés |

## Schedule

| ID | WBS | Task | Duration | Start | Finish | Predecessors | Complete | Remaining | Total slack | Constraint | Resources | Work | Actual work |
| --- | --- | --- | --- | --- | --- | --- | --- | --- | --- | --- | --- | --- | --- |
| 1 | 1 | **Proyecto** | 32d | 2020-01-20 A | 2020-03-03 |  | 15% | 27.08d | 0d |  |  | 832h | 160h |
| 2 | 1.1 | **Capacitación en Angular** | 10d | 2020-01-20 | 2020-01-31 |  |  |  | 0d |  |  | 160h |  |
| 3 | 1.1.1 | Sintaxis de typescript | 1d | 2020-01-20 | 2020-01-20 |  |  |  | 0d |  | López Sánchez Gustavo Andrés; Flores Altamirano Edgar | 16h |  |
| 4 | 1.1.2 | Tipos de dato, funciones | 1d | 2020-01-21 | 2020-01-21 | 3 |  |  | 0d |  | López Sánchez Gustavo Andrés; Flores Altamirano Edgar | 16h |  |
| 5 | 1.1.3 | Uso de herencia e implementación | 1d | 2020-01-22 | 2020-01-22 | 4 |  |  | 0d |  | López Sánchez Gustavo Andrés; Flores Altamirano Edgar | 16h |  |
| 6 | 1.1.4 | USo de CLI Angular (Comandos para creación dinámica) | 1d | 2020-01-23 | 2020-01-23 | 5 |  |  | 0d | start no earlier than 2020-01-23 | López Sánchez Gustavo Andrés; Flores Altamirano Edgar | 16h |  |
| 7 | 1.1.5 | Creación y uso de componentes | 1d | 2020-01-24 | 2020-01-24 | 6 |  |  | 0d | start no earlier than 2020-01-24 | López Sánchez Gustavo Andrés; Flores Altamirano Edgar | 16h |  |
| 8 | 1.1.6 | Ciclo de vida de los componentes | 1d | 2020-01-27 | 2020-01-27 | 7 |  |  | 0d |  | López Sánchez Gustavo Andrés; Flores Altamirano Edgar | 16h |  |
| 9 | 1.1.7 | Comunicación entre componentes | 1d | 2020-01-28 | 2020-01-28 | 8 |  |  | 0d |  | López Sánchez Gustavo Andrés; Flores Altamirano Edgar | 16h |  |
| 10 | 1.1.8 | Servicios Http y Ajax en Angular | 1d | 2020-01-29 | 2020-01-29 | 9 |  |  | 0d |  | López Sánchez Gustavo Andrés; Flores Altamirano Edgar | 16h |  |
| 11 | 1.1.9 | Pipes y formularios | 1d | 2020-01-30 | 2020-01-30 | 10 |  |  | 0d |  | López Sánchez Gustavo Andrés; Flores Altamirano Edgar | 16h |  |
| 12 | 1.1.10 | Angular Material UI | 1d | 2020-01-31 | 2020-01-31 | 11 |  |  | 0d |  | López Sánchez Gustavo Andrés; Flores Altamirano Edgar | 16h |  |
| 13 | 1.1.11 | Aplicación de prueba Angular 8.0 | 1d | 2020-01-31 | 2020-01-31 | 11 |  |  | 0d |  |  |  |  |
| 14 | 1.2 | **Capacitación en Latex** | 10d | 2020-01-20 A | 2020-01-31 A |  | 100% |  |  |  |  | 160h | 160h |
| 15 | 1.2.1 | Sintaxis | 1d | 2020-01-20 A | 2020-01-20 A |  | 100% |  |  |  | López Rivera Aiko; Cervantes Moreno Christian Andres | 16h | 16h |
| 16 | 1.2.2 | Estructura | 1d | 2020-01-21 A | 2020-01-21 A | 15 | 100% |  |  |  | López Rivera Aiko; Cervantes Moreno Christian Andres | 16h | 16h |
| 17 | 1.2.3 | Prueba de librerías | 1d | 2020-01-22 A | 2020-01-22 A | 16 | 100% |  |  |  | López Rivera Aiko; Cervantes Moreno Christian Andres | 16h | 16h |
| 18 | 1.2.4 | Uso de Overleaf | 1d | 2020-01-23 A | 2020-01-23 A | 17 | 100% |  |  |  | López Rivera Aiko; Cervantes Moreno Christian Andres | 16h | 16h |
| 19 | 1.2.5 | Plantilla latex (Reporte Técnico) | 4d | 2020-01-24 A | 2020-01-29 A | 18 | 100% |  |  |  | López Rivera Aiko; Cervantes Moreno Christian Andres | 64h | 64h |
| 20 | 1.2.6 | Requerimientos No Funcionales | 1d | 2020-01-30 A | 2020-01-30 A | 19 | 100% |  |  |  | López Rivera Aiko; Cervantes Moreno Christian Andres | 16h | 16h |
| 21 | 1.2.7 | Análisis de Riesgos**************** | 1d | 2020-01-31 A | 2020-01-31 A | 20 | 100% |  |  |  | López Rivera Aiko; Cervantes Moreno Christian Andres | 16h | 16h |
| 22 | 1.3 | **Arquitectura y Metodología** | 2d | 2020-02-03 | 2020-02-04 | 2 |  |  | 20d |  |  | 64h |  |
| 23 | 1.3.1 | Descripción de arquitecturra y metodologia | 2d | 2020-02-03 | 2020-02-04 |  |  |  | 20d |  | López Sánchez Gustavo Andrés; Flores Altamirano Edgar | 32h |  |
| 24 | 1.3.2 | Creacion de Diagrama de narquitectura | 2d | 2020-02-03 | 2020-02-04 |  |  |  | 20d |  | Flores Altamirano Edgar; López Sánchez Gustavo Andrés | 32h |  |

| ID | WBS | Task | Duration | Start | Finish | Predecessors | Total slack | Free slack | Constraint | Resources | Work |
| --- | --- | --- | --- | --- | --- | --- | --- | --- | --- | --- | --- |
| 25 | 1.4 | **Modelo de Negocio** | 3d | 2020-02-03 | 2020-02-05 | 2, 14 | 0d |  |  |  | 64h |
| 26 | 1.4.1 | Identificación de Objetos de Negocio | 1d | 2020-02-03 | 2020-02-03 |  | 2d |  |  | Flores Altamirano Edgar; López Sánchez Gustavo Andrés | 16h |
| 27 | 1.4.2 | Creación de primera versión de Modelo de Negocio | 3d | 2020-02-03 | 2020-02-05 |  | 0d |  |  | Flores Altamirano Edgar; López Sánchez Gustavo Andrés | 48h |
| 28 | 1.5 | **Capacitación en Firebase** | 9d | 2020-02-06 | 2020-02-18 | 25 | 0d |  |  |  | 192h |
| 29 | 1.5.1 | Base de Datos no SQL | 1d | 2020-02-06 | 2020-02-06 |  | 0d |  |  | López Sánchez Gustavo Andrés; Flores Altamirano Edgar | 16h |
| 30 | 1.5.2 | Colecciones y Documentos | 1d | 2020-02-06 | 2020-02-06 |  | 0d |  |  | López Sánchez Gustavo Andrés; Flores Altamirano Edgar | 16h |
| 31 | 1.5.3 | Estructura JSON | 2d | 2020-02-07 | 2020-02-10 | 29, 30 | 0d |  |  | López Sánchez Gustavo Andrés; Flores Altamirano Edgar | 32h |
| 32 | 1.5.4 | Cloud Firestore | 3d | 2020-02-11 | 2020-02-13 | 31 | 0d |  |  | López Sánchez Gustavo Andrés; Flores Altamirano Edgar | 48h |
| 33 | 1.5.5 | Realtime Database | 1d | 2020-02-14 | 2020-02-14 | 32 | 0d |  |  | López Sánchez Gustavo Andrés; Flores Altamirano Edgar | 16h |
| 34 | 1.5.6 | Reglas de seguridad | 2d | 2020-02-17 | 2020-02-18 | 33 | 0d |  |  | López Sánchez Gustavo Andrés; Flores Altamirano Edgar | 32h |
| 35 | 1.5.7 | Tipos de autentificación | 2d | 2020-02-17 | 2020-02-18 | 33 | 0d |  |  | López Sánchez Gustavo Andrés; Flores Altamirano Edgar | 32h |
| 36 | 1.6 | **Integración Firebase y Angular** | 9d | 2020-02-19 | 2020-03-02 | 28 | 0d |  |  |  | 160h |
| 37 | 1.6.1 | Prueba de Alta documento con diferentes tipos de datos | 1d | 2020-02-19 | 2020-02-19 |  | 0d |  |  | López Sánchez Gustavo Andrés; Flores Altamirano Edgar | 16h |
| 38 | 1.6.2 | Lectura de datos individual | 1d | 2020-02-20 | 2020-02-20 | 37 | 0d |  |  | López Sánchez Gustavo Andrés; Flores Altamirano Edgar | 16h |
| 39 | 1.6.3 | Lectura de datos por Colecciones | 1d | 2020-02-20 | 2020-02-20 | 37 | 0d |  |  | López Sánchez Gustavo Andrés; Flores Altamirano Edgar | 16h |
| 40 | 1.6.4 | Lectura con filtros | 1d | 2020-02-21 | 2020-02-21 | 38, 39 | 0d |  |  | López Sánchez Gustavo Andrés; Flores Altamirano Edgar | 16h |
| 41 | 1.6.5 | Funciones Cloud | 4d | 2020-02-24 | 2020-02-27 | 40 | 0d |  | start no earlier than 2020-01-22 | López Sánchez Gustavo Andrés; Flores Altamirano Edgar | 64h |
| 42 | 1.6.6 | Altas con por lotes | 1d | 2020-02-28 | 2020-02-28 | 41 | 0d |  |  | López Sánchez Gustavo Andrés; Flores Altamirano Edgar | 16h |
| 43 | 1.6.7 | Edición de documentos | 1d | 2020-03-02 | 2020-03-02 | 41, 42 | 0d |  |  | López Sánchez Gustavo Andrés; Flores Altamirano Edgar | 16h |
| 44 | 1.7 | **Hosting** | 1d | 2020-03-03 | 2020-03-03 | 25, 28, 36 | 0d |  |  |  | 32h |
| 45 | 1.7.1 | Hosting Firebase | 1d | 2020-03-03 | 2020-03-03 |  | 0d |  |  | López Sánchez Gustavo Andrés; Flores Altamirano Edgar | 16h |
| 46 | 1.7.2 | Pruebas de sitio | 1d | 2020-03-03 | 2020-03-03 |  | 0d |  |  | López Sánchez Gustavo Andrés; Flores Altamirano Edgar | 16h |
| 47 | 1.8 | **Sprint Gestión de etapas** | 7d | 2020-02-03 | 2020-02-11 | 2, 14 | 15d |  |  |  |  |
| 48 | 1.8.1 | Diagrama en BPN | 1d | 2020-02-03 | 2020-02-03 |  | 15d | 0d |  |  |  |
| 49 | 1.8.2 | Descripcion de tareas. | 1d | 2020-02-03 | 2020-02-03 |  | 15d | 0d |  |  |  |
| 50 | 1.8.3 | Requerimientos Funcionales | 1d | 2020-02-04 | 2020-02-04 | 48, 49 | 15d | 0d |  |  |  |
| 51 | 1.8.4 | Mensajes | 1d | 2020-02-04 | 2020-02-04 | 48, 49 | 15d | 0d |  |  |  |
| 52 | 1.8.5 | Reglas de Negocio | 1d | 2020-02-05 | 2020-02-05 | 50, 51 | 15d | 0d |  |  |  |

| ID | WBS | Task | Duration | Start | Finish | Predecessors | Total slack | Free slack |
| --- | --- | --- | --- | --- | --- | --- | --- | --- |
| 53 | 1.8.6 | **Casos de Uso** | 3d | 2020-02-06 | 2020-02-10 | 52 | 15d | 0d |
| 54 | 1.8.6.1 | Definir Etapas para el sistema de gestión de admisión escolar | 1d | 2020-02-06 | 2020-02-06 |  | 15d | 0d |
| 55 | 1.8.6.2 | Definir fechas de etapas seleccionadas | 1d | 2020-02-07 | 2020-02-07 | 54 | 15d | 0d |
| 56 | 1.8.6.3 | Indice de Gestion de Etapas | 1d | 2020-02-10 | 2020-02-10 | 55 | 15d |  |
| 57 | 1.8.7 | Pantallas Modulo de Gestión de Etapas | 1d | 2020-02-11 | 2020-02-11 | 53 | 15d |  |
| 58 | 1.8.8 | Revisión de CU con Desarrollo. | 1d | 2020-02-03 | 2020-02-03 |  | 21d |  |
| 59 | 1.8.9 | Reportar y Solucionar Incidencias del Modulo de Gestión de Etapas | 1d | 2020-02-03 | 2020-02-03 |  | 21d |  |
| 60 | 1.8.10 | Revisión Final Módulo de Documentación | 1d | 2020-02-03 | 2020-02-03 |  | 21d |  |
